# WBS_project

Schedule from MS Project, 2022-05-03 to 2022-08-03, costs in ₫.

## Calendars

- Standard: Mon-Fri 08:00-12:00, 13:00-17:00; Sat-Sun off.

## Resources

| Resource | Rate |
| --- | --- |
| Nguyễn Hiền Đức | 200 |
| Phạm Thanh Nhựt | 100 |
| Nguyễn Bảo Anh | 150 |
| Nguyễn Vân Anh | 150 |
| Coffee | 25 |

## Schedule

| ID | WBS | Task | Duration | Start | Finish | Predecessors | Baseline start | Baseline finish | Baseline duration | Baseline 1 start | Baseline 1 finish | Total slack | Resources | Work | Cost | Baseline cost |
| --- | --- | --- | --- | --- | --- | --- | --- | --- | --- | --- | --- | --- | --- | --- | --- | --- |
| 1 | 1 | **Dự án thiết kế hệ thống quản lý phòng gym** | 67d? | 2022-05-03 | 2022-08-03 |  | 2022-04-29 | 2022-07-14 | 55d? | 2022-05-03 | 2022-08-03 | 0d |  | 1560h | 196,000 | 149,720 |
| 2 | 1.1 | **Lập kế hoạch** | 6d | 2022-05-03 | 2022-05-10 |  | 2022-04-29 | 2022-05-09 | 7d | 2022-05-03 | 2022-05-10 | 0d |  | 101.6h | 14,240 | 11,840 |
| 3 | 1.1.1 | Xác định sản phẩm | 2d | 2022-05-03 | 2022-05-04 |  | 2022-04-29 | 2022-05-04 | 2d | 2022-05-03 | 2022-05-04 | 0d | Coffee; Nguyễn Bảo Anh [80%]; Nguyễn Hiền Đức; Nguyễn Vân Anh [70%]; Phạm Thanh Nhựt | 36h | 4,400 | 4,400 |
| 4 | 1.1.2 | Lập bảng kế hoạch khảo sát | 1d | 2022-05-05 | 2022-05-05 | 3 | 2022-05-05 | 2022-05-05 | 1d | 2022-05-05 | 2022-05-05 | 0d | Nguyễn Vân Anh [70%] | 5.6h | 840 | 840 |
| 5 | 1.1.3 | Tiến hành khảo sát | 2d | 2022-05-06 | 2022-05-09 | 4 | 2022-05-06 | 2022-05-06 | 1d | 2022-05-06 | 2022-05-09 | 0d | Nguyễn Hiền Đức; Phạm Thanh Nhựt | 32h | 4,800 | 2,400 |
| 6 | 1.1.4 | Lập bảng kết quả khảo sát | 1d | 2022-05-10 | 2022-05-10 | 5 | 2022-05-09 | 2022-05-09 | 1d | 2022-05-10 | 2022-05-10 | 0d | Nguyễn Vân Anh [70%] | 5.6h | 840 | 840 |
| 7 | 1.1.5 | Mô tả nghiệp vụ và quy trình | 1d | 2022-05-05 | 2022-05-05 | 3 | 2022-05-05 | 2022-05-05 | 1d | 2022-05-05 | 2022-05-05 | 3d | Nguyễn Bảo Anh [80%]; Nguyễn Hiền Đức; Phạm Thanh Nhựt | 22.4h | 3,360 | 3,360 |
| 8 | 1.2 | **Phân tích yêu cầu, thiết kế** | 7d? | 2022-05-11 | 2022-05-19 | 2 | 2022-05-10 | 2022-05-18 | 7d? | 2022-05-11 | 2022-05-19 | 0d |  | 144.8h | 21,720 | 21,720 |
| 9 | 1.2.1 | **Phát triển yêu cầu** | 1d? | 2022-05-11 | 2022-05-11 | 7, 6 | 2022-05-10 | 2022-05-10 | 1d? | 2022-05-11 | 2022-05-11 | 0d |  | 21.6h | 3,240 | 3,240 |
| 10 | 1.2.1.1 | Phát triển yêu cầu kinh doanh | 1d? | 2022-05-11 | 2022-05-11 | 7 | 2022-05-10 | 2022-05-10 | 1d? | 2022-05-11 | 2022-05-11 | 0d | Nguyễn Hiền Đức; Phạm Thanh Nhựt | 16h | 2,400 | 2,400 |
| 11 | 1.2.1.2 | Phát triển yêu cầu chức năng, phi chức năng | 1d? | 2022-05-11 | 2022-05-11 | 7 | 2022-05-10 | 2022-05-10 | 1d? | 2022-05-11 | 2022-05-11 | 0d | Nguyễn Vân Anh [70%] | 5.6h | 840 | 840 |
| 12 | 1.2.2 | **Phát triển thiết kế mức quan niệm** | 2d? | 2022-05-12 | 2022-05-13 | 9 | 2022-05-11 | 2022-05-12 | 2d? | 2022-05-12 | 2022-05-13 | 0d |  | 11.2h | 1,680 | 1,680 |
| 13 | 1.2.2.1 | Lập sơ đồ usecase | 1d? | 2022-05-12 | 2022-05-12 | 9 | 2022-05-11 | 2022-05-11 | 1d? | 2022-05-12 | 2022-05-12 | 0d | Nguyễn Vân Anh [70%] | 5.6h | 840 | 840 |
| 14 | 1.2.2.2 | Mô tả usecase | 1d? | 2022-05-13 | 2022-05-13 | 13 | 2022-05-12 | 2022-05-12 | 1d? | 2022-05-13 | 2022-05-13 | 0d | Nguyễn Vân Anh [70%] | 5.6h | 840 | 840 |
| 15 | 1.2.3 | **Phát triển thiết kế kiến trúc hệ thống** | 4d | 2022-05-16 | 2022-05-19 | 12 | 2022-05-13 | 2022-05-18 | 4d | 2022-05-16 | 2022-05-19 | 0d |  | 112h | 16,800 | 16,800 |
| 16 | 1.2.3.1 | Đánh giá phương pháp thiết kế ứng dụng | 2d | 2022-05-16 | 2022-05-17 | 14 | 2022-05-13 | 2022-05-16 | 2d | 2022-05-16 | 2022-05-17 | 0d | Nguyễn Bảo Anh [80%]; Nguyễn Hiền Đức; Nguyễn Vân Anh [70%]; Phạm Thanh Nhựt | 56h | 8,400 | 8,400 |
| 17 | 1.2.3.2 | Lựa chọn phương pháp thiết kế ứng dụng | 2d | 2022-05-18 | 2022-05-19 | 16 | 2022-05-17 | 2022-05-18 | 2d | 2022-05-18 | 2022-05-19 | 0d | Nguyễn Bảo Anh [80%]; Nguyễn Hiền Đức; Nguyễn Vân Anh [70%]; Phạm Thanh Nhựt | 56h | 8,400 | 8,400 |
| 18 | 1.3 | **Xây dựng ứng dụng** | 47d | 2022-05-20 | 2022-07-25 | 8 | 2022-05-19 | 2022-07-05 | 34d | 2022-05-20 | 2022-07-25 | 0d |  | 1164h | 138,800 | 94,920 |
| 19 | 1.3.1 | **Thiết kế hệ thống** | 30d | 2022-05-20 | 2022-06-30 | 8 | 2022-05-19 | 2022-06-10 | 17d | 2022-05-20 | 2022-06-30 | 0d |  | 832h | 98,800 | 54,920 |
| 20 | 1.3.1.1 | Thiết kế cơ sở dữ liệu | 10d | 2022-05-20 | 2022-06-02 | 8 | 2022-05-19 | 2022-05-27 | 7d | 2022-05-20 | 2022-06-02 | 0d | Coffee; Nguyễn Bảo Anh [80%]; Nguyễn Hiền Đức | 224h | 27,600 | 19,320 |
| 21 | 1.3.1.2 | Thiết kế back-end | 20d | 2022-06-03 | 2022-06-30 | 20 | 2022-05-30 | 2022-06-10 | 10d | 2022-06-03 | 2022-06-30 | 0d | Coffee; Nguyễn Bảo Anh [80%]; Nguyễn Hiền Đức; Phạm Thanh Nhựt | 608h | 71,200 | 35,600 |
| 22 | 1.3.2 | Thiết kế giao diện (front-end) | 7d | 2022-07-01 | 2022-07-11 | 19 | 2022-06-13 | 2022-06-21 | 7d | 2022-07-01 | 2022-07-11 | 0d | Nguyễn Vân Anh [70%]; Phạm Thanh Nhựt | 95.2h | 11,480 | 11,480 |
| 23 | 1.3.3 | Thiết kế luồng kinh doanh | 5d | 2022-07-12 | 2022-07-18 | 19, 22 | 2022-06-22 | 2022-06-28 | 5d | 2022-07-12 | 2022-07-18 | 0d | Nguyễn Vân Anh [70%]; Phạm Thanh Nhựt | 68h | 8,200 | 8,200 |
| 24 | 1.3.4 | Phát triển kế hoạch kiểm tra cấp cao | 2d | 2022-07-19 | 2022-07-20 | 23 | 2022-06-29 | 2022-06-30 | 2d | 2022-07-19 | 2022-07-20 | 0d | Nguyễn Bảo Anh [80%]; Nguyễn Hiền Đức; Phạm Thanh Nhựt; Coffee | 60.8h | 7,120 | 7,120 |
| 25 | 1.3.5 | Cài đặt hệ thống | 3d | 2022-07-21 | 2022-07-25 | 24 | 2022-07-01 | 2022-07-05 | 3d | 2022-07-21 | 2022-07-25 | 0d | Coffee; Nguyễn Bảo Anh [80%]; Nguyễn Hiền Đức; Nguyễn Vân Anh [70%]; Phạm Thanh Nhựt | 108h | 13,200 | 13,200 |

| ID | WBS | Task | Type | Duration | Start | Finish | Predecessors | Baseline start | Baseline finish | Baseline duration | Baseline 1 start | Baseline 1 finish | Total slack | Resources | Work | Cost | Baseline cost |
| --- | --- | --- | --- | --- | --- | --- | --- | --- | --- | --- | --- | --- | --- | --- | --- | --- | --- |
| 26 | 1.4 | **Kiểm thử** |  | 4d | 2022-07-26 | 2022-07-29 | 18 | 2022-07-06 | 2022-07-11 | 4d | 2022-07-26 | 2022-07-29 | 0d |  | 100.8h | 13,920 | 13,920 |
| 27 | 1.4.1 | Kiểm thử hệ thống |  | 2d | 2022-07-26 | 2022-07-27 | 18 | 2022-07-06 | 2022-07-07 | 2d | 2022-07-26 | 2022-07-27 | 0d | Coffee; Nguyễn Bảo Anh [80%]; Nguyễn Hiền Đức | 44.8h | 5,520 | 5,520 |
| 28 | 1.4.2 | Kiểm tra sự chấp thuận của người dùng |  | 2d | 2022-07-28 | 2022-07-29 | 27 | 2022-07-08 | 2022-07-11 | 2d | 2022-07-28 | 2022-07-29 | 0d | Nguyễn Vân Anh [70%]; Nguyễn Bảo Anh [80%] | 24h | 3,600 | 3,600 |
| 29 | 1.4.3 | Kiểm thử hiệu suất |  | 2d | 2022-07-28 | 2022-07-29 | 27 | 2022-07-08 | 2022-07-11 | 2d | 2022-07-28 | 2022-07-29 | 0d | Nguyễn Hiền Đức; Phạm Thanh Nhựt | 32h | 4,800 | 4,800 |
| 30 | 1.5 | **Triển khai** |  | 3d | 2022-08-01 | 2022-08-03 | 26 | 2022-07-12 | 2022-07-14 | 3d | 2022-08-01 | 2022-08-03 | 0d |  | 48.8h | 7,320 | 7,320 |
| 31 | 1.5.1 | **Bàn giao** |  | 3d | 2022-08-01 | 2022-08-03 | 26 | 2022-07-12 | 2022-07-14 | 3d | 2022-08-01 | 2022-08-03 | 0d |  | 48.8h | 7,320 | 7,320 |
| 32 | 1.5.1.1 | Hỗ trợ nhân sự |  | 3d | 2022-08-01 | 2022-08-03 | 26 | 2022-07-12 | 2022-07-14 | 3d | 2022-08-01 | 2022-08-03 | 0d | Nguyễn Vân Anh [70%] | 16.8h | 2,520 | 2,520 |
| 33 | 1.5.1.2 | Tài liệu hướng dẫn sử dụng |  | 2d | 2022-08-01 | 2022-08-02 | 26 | 2022-07-12 | 2022-07-13 | 2d | 2022-08-01 | 2022-08-02 | 1d | Nguyễn Hiền Đức; Phạm Thanh Nhựt | 32h | 4,800 | 4,800 |
| 34 | 1.6 | Kết thúc dự án và bắt đầu vận hành | milestone | 0d | 2022-08-03 | 2022-08-03 | 30 | 2022-07-14 | 2022-07-14 | 0d | 2022-08-03 | 2022-08-03 | 0d | Nguyễn Bảo Anh [80%]; Nguyễn Hiền Đức; Nguyễn Vân Anh [70%]; Phạm Thanh Nhựt |  |  |  |
